# project_v5

Schedule from MS Project, 2025-01-01 to 2027-02-08, costs in €.

## Calendars

- Standard: Mon-Fri 08:00-12:00, 13:00-17:00; Sat-Sun off.

## Resources

| Resource | Rate | Notes |
| --- | --- | --- |
| Geotechnical Team |  | composed of 1 geotechnical engineer |
| Environmental Compliance Team |  | composed of 2 environmental specialists |
| Electrical Engineering Unit | 160 | composed of 5 members: 2 seniors, 1 cad tech, 2 juniors |
| Automation and SCADA Engineering Unit | 63.75 | composed of 2 members: 1 senior and 1 junior |
| Power System Engineering Unit | 70 | composed of 2 members: 1 senior, 1 mid level |
| Civil Engeneering Team | 110 | composed of 3 members: 2 seniors, 1 cad tech |
| Energy Engeneering Team | 100 | composed of 2 members: 2 seniors |
| Legal & Permitting Team | 200 | composed of a legal team (unit) |
| Procurement Team | 140 | composed of 3 members: 2 procurement specialist,1 technical specialist |
| Logistics Team | 75 | composed of 3 members: 1 Logistics Coordinator,1 Delivery Planner,1 warehouse officer |
| PV Installation Unit |  | 20 workers |
| Electrical Installation Unit |  |  |
| Site Civil Team |  | 10 workers/ certified machinery workers |
| Testing and Commissioning department |  | composed of 2 members: 1 protection engineer, 1 electrical technician |
| Topographical Surveying Team |  | composed of 2 surveyor specialists |

## Schedule

| ID | WBS | Task | Duration | Start | Finish | Predecessors | Total slack | Free slack | Resources | Work | Cost |
| --- | --- | --- | --- | --- | --- | --- | --- | --- | --- | --- | --- |
| 1 | 1 | **Preliminary analysis (1)** | 37.5d | 2025-01-01 | 2025-02-21 |  | 0d |  |  | 480h | 643,440 |
| 2 | 1.1 | **Site feasibility study and survey (1.1)** | 10d | 2025-01-01 | 2025-01-14 |  | 0d |  |  | 176h | 107,400 |
| 3 | 1.1.1 | Topographical Survey Coordination (1.1.1) | 48h | 2025-01-01 | 2025-01-08 |  | 4d |  | Topographical Surveying Team | 48h | 20,000 |
| 4 | 1.1.2 | Geotechnical Study Supervision (1.1.2) | 80h | 2025-01-01 | 2025-01-14 |  | 0d |  | Geotechnical Team | 80h | 35,000 |
| 5 | 1.1.3 | Preliminary Solar Resource Analysis (1.1.3) | 48h | 2025-01-01 | 2025-01-08 |  | 4d |  | Energy Engeneering Team | 48h | 52,400 |
| 6 | 1.2 | **Environmental impact Assessment (1.2)** | 14d | 2025-01-15 | 2025-02-03 |  | 0d |  |  | 112h | 510,000 |
| 7 | 1.2.1 | Environmental Impact Assessment Prep (1.2.1) | 80h | 2025-01-15 | 2025-01-28 | 2 | 0d |  | Environmental Compliance Team | 80h | 110,000 |
| 8 | 1.2.2 | Environmental Mitigation Action Planning (1.2.2) | 32h | 2025-01-29 | 2025-02-03 | 7 | 0d |  | Environmental Compliance Team | 32h | 400,000 |
| 9 | 1.3 | Initial layout design (1.3) | 60h | 2025-02-04 | 2025-02-13 | 2, 7, 8 | 0d |  | Energy Engeneering Team; Civil Engeneering Team; Electrical Engineering Unit [40%] | 144h | 16,440 |
| 10 | 1.4 | Permitting & approvals (1.4) | 48h | 2025-02-13 | 2025-02-21 | 8, 9 | 0d |  | Legal & Permitting Team | 48h | 9,600 |
| 11 | 2 | **Engineering and Design (2)** | 31.5d | 2025-04-18 | 2025-06-02 |  | 0d |  |  | 464.26h | 79,598.6 |
| 12 | 2.1 | **Civil Design (2.1)** | 23.25d | 2025-04-18 | 2025-05-21 |  | 0d |  |  | 181.86h | 24,024.6 |
| 13 | 2.1.1 | **Site Layout & Zoning (2.1.1)** | 6.75d | 2025-04-18 | 2025-04-29 |  | 0d |  |  | 63.9h | 6,729 |
| 14 | 2.1.1.1 | Preliminary Layout & Constraints Map (2.1.1.1) | 24h | 2025-04-18 | 2025-04-23 | 1FS+2mo | 0d |  | Civil Engeneering Team | 24h | 2,640 |
| 15 | 2.1.1.2 | Final Layout, Optimization & Report (2.1.1.2) | 30h | 2025-04-23 | 2025-04-29 | 14 | 0d |  | Civil Engeneering Team [33%]; Energy Engeneering Team | 39.9h | 4,089 |
| 16 | 2.1.2 | **Site Grading & Drainage Design (2.1.2)** | 7.5d | 2025-05-02 | 2025-05-13 |  | 0d |  |  | 46.2h | 5,082 |
| 17 | 2.1.2.1 | Grading Analysis & Cut-Fill Balancing (2.1.2.1) | 60h | 2025-05-02 | 2025-05-13 | 19 | 0d |  | Civil Engeneering Team [33%] | 19.8h | 2,178 |
| 18 | 2.1.2.2 | Drainage Layout & Hydraulic Calculation (2.1.2.2) | 40h | 2025-05-02 | 2025-05-09 | 19 | 2.5d |  | Civil Engeneering Team [66%] | 26.4h | 2,904 |
| 19 | 2.1.3 | Road & Access Design (2.1.3) | 24h | 2025-04-29 | 2025-05-02 | 13 | 0d |  | Civil Engeneering Team [66%] | 15.84h | 1,742.4 |
| 20 | 2.1.4 | Permits and Approvals (2.1.5) | 48h | 2025-05-13 | 2025-05-21 | 19, 16, 13 | 0d |  | Legal & Permitting Team | 48h | 9,600 |
| 21 | 2.1.5 | Bill of quantities preparation (2.1.6) | 24h | 2025-05-13 | 2025-05-16 | 19, 16, 13 | 429d |  | Civil Engeneering Team [33%] | 7.92h | 871.2 |
| 22 | 2.2 | **Electrical Design (2.2)** | 28.5d | 2025-04-23 | 2025-06-02 |  | 425.25d | 0d |  | 282.4h | 55,574 |
| 23 | 2.2.1 | **Electrical Layout & Schematics (2.2.2)** | 11.5d | 2025-04-23 | 2025-05-08 |  | 425.25d | 0d |  | 43.2h | 6,912 |
| 24 | 2.2.1.1 | DC/AC Layout & Inverter Cabling and design (2.2.2.1) | 60h | 2025-04-23 | 2025-05-02 | 14 | 425.25d | 0d | Electrical Engineering Unit [40%] | 24h | 3,840 |
| 25 | 2.2.1.2 | MV Layout, Protection & Schematic (2.2.2.2) | 32h | 2025-05-05 | 2025-05-08 | 24 | 425.25d |  | Electrical Engineering Unit [60%] | 19.2h | 3,072 |
| 26 | 2.2.2 | Grounding & Lightning Protection Design (2.2.3) | 24h | 2025-05-05 | 2025-05-07 | 24 | 444.5d |  | Electrical Engineering Unit [40%] | 9.6h | 1,536 |

Notes:
- 10: After this there is the waiting time for the approval
- 23: add substation

| ID | WBS | Task | Type | Duration | Start | Finish | Predecessors | Total slack | Free slack | Resources | Work | Cost |
| --- | --- | --- | --- | --- | --- | --- | --- | --- | --- | --- | --- | --- |
| 27 | 2.2.3 | **SCADA Design (2.2.4)** |  | 11d | 2025-05-09 | 2025-05-23 |  | 425.25d | 0d |  | 88h | 30,110 |
| 28 | 2.2.3.1 | SCADA System Architecture & Signal Design (2.2.4.1) |  | 48h | 2025-05-09 | 2025-05-16 | 23 | 425.25d | 0d | Automation and SCADA Engineering Unit | 48h | 27,560 |
| 29 | 2.2.3.2 | Functional Spec & Documentation (2.2.4.2) |  | 40h | 2025-05-19 | 2025-05-23 | 28 | 425.25d |  | Automation and SCADA Engineering Unit | 40h | 2,550 |
| 30 | 2.2.4 | Grid Interconnection Design (2.2.5) |  | 72h | 2025-05-09 | 2025-05-21 | 23 | 427.25d | 2d | Power System Engineering Unit | 72h | 5,040 |
| 31 | 2.2.5 | Permits and Approvals (2.2.6) |  | 48h | 2025-05-26 | 2025-06-02 | 30, 27 | 425.25d | 0d | Legal & Permitting Team | 48h | 9,600 |
| 32 | 2.2.6 | Bill of quantities preparation (2.2.7) |  | 24h | 2025-05-26 | 2025-05-28 | 30, 27 | 429.5d |  | Power System Engineering Unit [50%]; Electrical Engineering Unit [40%] | 21.6h | 2,376 |
| 33 | 3 | **Procurement (3)** |  | 23d | 2025-05-21 | 2025-06-23 |  | 425.25d |  |  | 193.24h | 29,886 |
| 34 | 3.1 | **Vendor qualification (3.1)** |  | 13.5d | 2025-06-03 | 2025-06-20 |  | 426.5d |  |  | 55.44h | 12,264 |
| 35 | 3.1.1 | Vendor Screening & Pre-qualification (3.1.1) |  | 60h | 2025-06-03 | 2025-06-12 | 22, 12 | 426.5d | 0d | Procurement Team [66%] | 39.6h | 5,544 |
| 36 | 3.1.2 | Technical Evaluation & Shortlisting (3.1.2) |  | 48h | 2025-06-12 | 2025-06-20 | 35 | 426.5d |  | Procurement Team [33%] | 15.84h | 6,720 |
| 37 | 3.2 | **Contracting (3.2)** |  | 14.25d | 2025-05-21 | 2025-06-10 |  | 425.25d | 0d |  | 67.8h | 12,372 |
| 38 | 3.2.1 | Subcontractor Scouting & Negotiation (3.2.1) |  | 60h | 2025-05-21 | 2025-06-02 | 12 | 426d | 0.75d | Procurement Team [33%] | 19.8h | 2,772 |
| 39 | 3.2.2 | Contract Finalization & Legal Review (3.2.2) |  | 48h | 2025-06-03 | 2025-06-10 | 38, 31 | 425.25d |  | Legal & Permitting Team | 48h | 9,600 |
| 40 | 3.3 | Delivery Planning (3.3) |  | 70h | 2025-06-11 | 2025-06-23 | 37 | 425.25d |  | Logistics Team | 70h | 5,250 |
| 41 | 4 | **Site Preparation & Infrastructure (4)** |  | 34.25d | 2025-06-18 | 2025-08-05 |  | 0d |  |  | 1640h | 449,845 |
| 42 | 4.1 | **Groundwork & Construction (4.1)** |  | 34.25d | 2025-06-18 | 2025-08-05 |  | 0d |  |  | 592h | 236,925 |
| 43 | 4.1.1 | Site Clearing (4.1.1) |  | 55h | 2025-06-18 | 2025-06-27 | 20FS+1mo | 0d |  | Site Civil Team | 55h | 200,000 |
| 44 | 4.1.2 | Site Excavation & Grading (4.1.2) | manual | 24h | 2025-07-11 | 2025-07-16 | 54 |  |  | Site Civil Team [300%] | 72h | 3,400 |
| 45 | 4.1.3 | **Drainage systems installation (4.1.3)** |  | 11.88d | 2025-07-21 | 2025-08-05 |  | 0d |  |  | 465h | 33,525 |
| 46 | 4.1.3.1 | Excavation of the main canal (4.1.3.1) |  | 35h | 2025-07-30 | 2025-08-05 | 47, 48 | 0d |  | Site Civil Team [300%] | 105h | 7,925 |
| 47 | 4.1.3.2 | Excavation of the secondary canal Excavator 1 (4.1.3.2) |  | 60h | 2025-07-21 | 2025-07-30 | 50 | 0d |  | Site Civil Team [300%] | 180h | 12,800 |
| 48 | 4.1.3.3 | Excavation of the secondary canal Excavator 2 (4.1.3.3) |  | 60h | 2025-07-21 | 2025-07-30 | 47SS | 0d |  | Site Civil Team [300%] | 180h | 12,800 |
| 49 | 4.2 | **Site Access & Utilities (4.2)** |  | 23d | 2025-06-27 | 2025-07-30 |  | 0d |  |  | 1048h | 212,920 |
| 50 | 4.2.1 | **Access road construction (4.2.1)** |  | 12.5d | 2025-07-02 | 2025-07-21 |  | 0d |  |  | 400h | 76,000 |
| 51 | 4.2.1.1 | Road nort-south (4.2.1.1) |  | 50h | 2025-07-02 | 2025-07-10 | 58 | 0d |  | Site Civil Team [400%] | 200h | 38,000 |
| 52 | 4.2.1.2 | Road west-east (4.2.1.2) |  | 50h | 2025-07-10 | 2025-07-21 | 51 | 0d |  | Site Civil Team [400%] | 200h | 38,000 |

Notes:
- 43: gap after 21 (permits?)

| ID | WBS | Task | Duration | Start | Finish | Predecessors | Total slack | Free slack | Resources | Work | Cost |
| --- | --- | --- | --- | --- | --- | --- | --- | --- | --- | --- | --- |
| 53 | 4.2.2 | **Perimeter Fencing (4.2.2)** | 20d | 2025-07-02 | 2025-07-30 |  | 4.38d |  |  | 480h | 97,200 |
| 54 | 4.2.2.1 | North side (4.2.2.1) | 40h | 2025-07-02 | 2025-07-09 | 50SS | 4.38d | 0d | Site Civil Team [300%] | 120h | 24,300 |
| 55 | 4.2.2.2 | East side (4.2.2.2) | 40h | 2025-07-09 | 2025-07-16 | 54 | 4.38d | 0d | Site Civil Team [300%] | 120h | 24,300 |
| 56 | 4.2.2.3 | West side (4.2.2.3) | 40h | 2025-07-16 | 2025-07-23 | 55 | 4.38d | 0d | Site Civil Team [300%] | 120h | 24,300 |
| 57 | 4.2.2.4 | South side (4.2.2.4) | 40h | 2025-07-23 | 2025-07-30 | 56 | 4.38d |  | Site Civil Team [300%] | 120h | 24,300 |
| 58 | 4.2.3 | **Temporary Buildings Construction (4.2.3)** | 3d | 2025-06-27 | 2025-07-02 |  | 0d |  |  | 168h | 39,720 |
| 59 | 4.2.3.1 | (prefabricated) Site office installation (4.2.3.1) | 8h | 2025-06-27 | 2025-06-30 | 43 | 0d |  | Site Civil Team [300%] | 24h | 8,360 |
| 60 | 4.2.3.2 | Site office utilities installation (generators,wiring,outlets,internet,ventilation,safety,needed equipment) (4.2.3.2) | 16h | 2025-06-30 | 2025-07-02 | 59 | 0d |  | Site Civil Team [300%] | 48h | 7,720 |
| 61 | 4.2.3.3 | (prefabricated) Workers rest area installation (4.2.3.3) | 8h | 2025-06-27 | 2025-06-30 | 59SS | 0d |  | Site Civil Team [300%] | 24h | 8,360 |
| 62 | 4.2.3.4 | Rest area utilities installation (generators,wiring,outlets,internet,ventilation,safety,needed equipment) (4.2.3.4) | 16h | 2025-06-30 | 2025-07-02 | 61 | 0d |  | Site Civil Team [300%] | 48h | 7,720 |
| 63 | 4.2.3.5 | Portable toilets installation (4.2.3.5) | 8h | 2025-06-27 | 2025-06-30 | 59SS | 2d |  | Site Civil Team [300%] | 24h | 7,560 |
| 64 | 5 | **Construction (Outsourced) (5)** | 59d | 2025-08-06 | 2025-10-27 |  | 135d |  |  |  | 1,612,000 |
| 65 | 5.1 | Inverter Room (5.1) | 312h | 2025-09-03 | 2025-10-27 | 66 | 135d | 0d |  |  | 1,248,000 |
| 66 | 5.2 | Maintenance Building (5.2) | 1mo | 2025-08-06 | 2025-09-02 | 41 | 135d | 0d |  |  | 350,000 |
| 67 | 5.3 | Security office (5.3) | 5d | 2025-09-03 | 2025-09-09 | 66 | 369d |  |  |  | 14,000 |
| 68 | 6 | **Photovoltaic Panels (6)** | 291d | 2025-07-15 | 2026-08-25 |  | 16d |  |  | 44208h | 28,422,360 |
| 69 | 6.1 | **PV panel and mount procurement (6.1)** | 246.62d | 2025-07-15 | 2026-06-24 |  | 163.38d |  |  | 208h | 18,422,360 |
| 70 | 6.1.1 | PV Batch 1 (6.1.1) | 48h | 2025-07-15 | 2025-07-23 | 79SF-10d | 404d |  | Logistics Team; Procurement Team | 96h | 2,310,320 |
| 71 | 6.1.2 | PV Batch 2 (6.1.2) | 8h | 2025-09-08 | 2025-09-09 | 80SF-10d | 369.62d |  | Procurement Team; Logistics Team | 16h | 2,301,720 |
| 72 | 6.1.3 | PV Batch 3 (6.1.3) | 1d | 2025-10-24 | 2025-10-27 | 81SF-10d | 335.25d |  | Procurement Team; Logistics Team | 16h | 2,301,720 |
| 73 | 6.1.4 | PV Batch 4 (6.1.4) | 1d | 2025-12-12 | 2025-12-15 | 82SF-10d | 300.88d |  | Procurement Team; Logistics Team | 16h | 2,301,720 |
| 74 | 6.1.5 | PV Batch 5 (6.1.5) | 1d | 2026-01-29 | 2026-01-30 | 83SF-10d | 266.5d |  | Procurement Team; Logistics Team | 16h | 2,301,720 |
| 75 | 6.1.6 | PV Batch 6 (6.1.6) | 1d | 2026-03-18 | 2026-03-19 | 84SF-10d | 232.12d |  | Procurement Team; Logistics Team | 16h | 2,301,720 |
| 76 | 6.1.7 | PV Batch 7 (6.1.7) | 1d | 2026-05-06 | 2026-05-07 | 85SF-10d | 197.75d |  | Procurement Team; Logistics Team | 16h | 2,301,720 |
| 77 | 6.1.8 | PV Batch 8 (6.1.8) | 1d | 2026-06-23 | 2026-06-24 | 86SF-10d | 163.38d |  | Procurement Team; Logistics Team | 16h | 2,301,720 |

Notes:
- 64: Are we sure that it is up to us to schedule construction?

| ID | WBS | Task | Duration | Start | Finish | Predecessors | Total slack | Free slack | Resources | Work | Cost |
| --- | --- | --- | --- | --- | --- | --- | --- | --- | --- | --- | --- |
| 78 | 6.2 | **PV panel installation (6.2)** | 275d | 2025-08-06 | 2026-08-25 |  | 0d |  |  | 44000h | 10,000,000 |
| 79 | 6.2.1 | PV panel installation batch 1(6.2.1) | 275h | 2025-08-06 | 2025-09-23 | 41, 49 | 0d |  | PV Installation Unit [2000%] | 5500h | 1,250,000 |
| 80 | 6.2.2 | PV panel installation batch 2(6.2.2) | 275h | 2025-09-23 | 2025-11-10 | 79 | 0d |  | PV Installation Unit [2000%] | 5500h | 1,250,000 |
| 81 | 6.2.3 | PV panel installation batch 3 (6.2.3) | 275h | 2025-11-10 | 2025-12-29 | 80 | 0d |  | PV Installation Unit [2000%] | 5500h | 1,250,000 |
| 82 | 6.2.4 | PV panel installation batch 4 (6.2.4) | 275h | 2025-12-29 | 2026-02-13 | 81 | 0d |  | PV Installation Unit [2000%] | 5500h | 1,250,000 |
| 83 | 6.2.5 | PV panel installation batch 5 (6.2.5) | 275h | 2026-02-13 | 2026-04-02 | 82 | 0d |  | PV Installation Unit [2000%] | 5500h | 1,250,000 |
| 84 | 6.2.6 | PV panel installation batch 6 (6.2.6) | 275h | 2026-04-02 | 2026-05-21 | 83 | 0d |  | PV Installation Unit [2000%] | 5500h | 1,250,000 |
| 85 | 6.2.7 | PV panel installation batch 7 (6.2.7) | 275h | 2026-05-21 | 2026-07-08 | 84 | 0d |  | PV Installation Unit [2000%] | 5500h | 1,250,000 |
| 86 | 6.2.8 | PV panel installation batch 8 (6.2.8) | 275h | 2026-07-08 | 2026-08-25 | 85 | 0d |  | PV Installation Unit [2000%] | 5500h | 1,250,000 |
| 87 | 7 | **Electrical & Wiring Systems (7)** | 268.5d | 2025-05-21 | 2026-06-01 |  | 61.5d |  |  | 8113.2h | 72,646,080 |
| 88 | 7.1 | **Cable and wiring (7.1)** | 118.5d | 2025-11-26 | 2026-05-11 |  | 61.5d | 0d |  | 1452h |  |
| 89 | 7.1.1 | DC cable installation between arrays (7.1.1) | 660h | 2025-11-26 | 2026-03-20 | 79, 99 | 61.5d | 0d | Electrical Installation Unit | 660h |  |
| 90 | 7.1.2 | AC collection system cable installation (7.1.2) | 504h | 2025-11-26 | 2026-02-20 | 79, 99 | 81d | 19.5d | Electrical Installation Unit | 504h |  |
| 91 | 7.1.3 | cable temination, labeling, testing and certification (7.1.3) | 288h | 2026-03-20 | 2026-05-11 | 90, 89 | 61.5d |  | Electrical Installation Unit | 288h |  |
| 92 | 7.2 | **Inverters (7.2)** | 90d | 2025-09-24 | 2026-01-27 |  | 135d | 37.5d |  | 528h | 61,684,640 |
| 93 | 7.2.1 | Inverter procurement contract finalization (7.2.1) | 32h | 2025-09-24 | 2025-09-30 | 94SF-1mo | 221d |  | Logistics Team; Procurement Team [50%] | 48h | 1,804,640 |
| 94 | 7.2.2 | Inverter mounting and positioning (7.2.3) | 192h | 2025-10-28 | 2025-11-28 | 65, 41 | 135d | 0d | Electrical Installation Unit | 192h |  |
| 95 | 7.2.3 | DC connection to inverters and Connect inverters to AC distribution (7.2.4) | 288h | 2025-12-01 | 2026-01-19 | 94 | 135d | 0d | Electrical Installation Unit | 288h | 59,400,000 |
| 96 | 7.2.4 | Verify inverter input & output testing (7.2.5) | 48h | 2026-01-20 | 2026-01-27 | 95 | 135d |  |  |  | 480,000 |
| 97 | 7.3 | **Substation (7.3)** | 182.5d | 2025-05-21 | 2026-01-30 |  | 116.5d | 35d |  | 5949.2h | 9,717,360 |
| 98 | 7.3.1 | Transformer procurement (7.3.1) | 40h | 2025-05-21 | 2025-05-28 | 99SF-10w | 287.5d | 0d | Logistics Team; Procurement Team [33%] | 53.2h | 1,048,600 |
| 99 | 7.3.2 | Transformer pad preparation and installation (7.3.2) | 640h | 2025-08-06 | 2025-11-25 | 41 | 61.5d | 0d | Site Civil Team [800%] | 5120h | 195,000 |
| 100 | 7.3.3 | Transformer connections and wiring (7.3.3) | 224h | 2025-11-26 | 2026-01-02 | 99 | 132.5d | 0d | Electrical Installation Unit | 224h |  |
| 101 | 7.3.4 | Transformer testing and commissioning (7.3.4) | 96h | 2026-01-05 | 2026-01-20 | 100 | 132.5d | 0d | Testing and Commissioning department | 96h |  |
| 102 | 7.3.5 | Switchgear procurement (7.3.5) | 32h | 2025-06-25 | 2025-06-30 | 103FS-8w | 278.5d | 146d | Logistics Team; Procurement Team | 64h | 3,406,880 |
| 103 | 7.3.6 | Assembly and mounting of switchgears (7.3.6) | 80h | 2025-08-06 | 2025-08-19 | 41 | 242.5d | 0d | Electrical Installation Unit | 80h | 2,740,000 |
| 104 | 7.3.7 | Busbar installation and connections (7.3.7) | 60h | 2026-01-21 | 2026-01-30 | 103, 98, 99, 100, 101, 102 | 132.5d |  | Electrical Installation Unit | 60h | 1,200,000 |
| 105 | 7.3.8 | Relay panels procurement (7.3.8) | 32h | 2025-05-21 | 2025-05-26 | 98SS | 287.5d | 0d | Logistics Team; Procurement Team | 64h | 806,880 |
| 106 | 7.3.9 | Mounting Relay panel Control Cabinets and Wiring (7.3.9) | 80h | 2025-05-27 | 2025-06-09 | 105 | 287.5d | 0d | Electrical Installation Unit | 80h |  |
| 107 | 7.3.10 | Relay Installation and Configuration (7.3.10) | 60h | 2025-06-10 | 2025-06-19 | 106 | 287.5d | 0d | Electrical Installation Unit | 60h | 120,000 |
| 108 | 7.3.11 | Grounding grid installation (7.3.11) | 48h | 2025-06-19 | 2025-06-27 | 107 | 287.5d |  | Electrical Installation Unit | 48h | 200,000 |

Notes:
- 79: I've considered 6 teams mede by 5 people
- 89: only 60 h to wire 80 000 panels?

| ID | WBS | Task | Duration | Start | Finish | Predecessors | Total slack | Free slack | Resources | Work | Cost |
| --- | --- | --- | --- | --- | --- | --- | --- | --- | --- | --- | --- |
| 109 | 7.4 | **Protection & Monitoring (7.4)** | 51d | 2026-03-20 | 2026-06-01 |  | 61.5d |  |  | 184h | 1,244,080 |
| 110 | 7.4.1 | DC and AC surge protection installation (7.4.1) | 40h | 2026-05-11 | 2026-05-18 | 88, 92, 97 | 61.5d | 0d | Electrical Installation Unit | 40h | 60,000 |
| 111 | 7.4.2 | Lightning protection system installation (7.4.2) | 32h | 2026-03-20 | 2026-03-26 | 89, 92, 97 | 106.5d | 0d | Electrical Installation Unit | 32h | 450,000 |
| 112 | 7.4.3 | SCADA system configuration (7.4.3) | 40h | 2026-05-18 | 2026-05-25 | 110 | 61.5d | 0d | Automation and SCADA Engineering Unit | 40h | 152,550 |
| 113 | 7.4.4 | Weather Station Installation (7.4.4) | 16h | 2026-03-26 | 2026-03-30 | 111 | 106.5d |  | Site Civil Team [200%] | 32h |  |
| 114 | 7.4.5 | Inverter monitoring setup (7.4.5) | 24h | 2026-05-25 | 2026-05-28 | 112 | 61.5d | 0d | Automation and SCADA Engineering Unit | 24h | 331,530 |
| 115 | 7.4.6 | DC and AC insulation testing (7.4.6) | 16h | 2026-05-28 | 2026-06-01 | 114 | 61.5d |  | Testing and Commissioning department | 16h | 250,000 |
| 116 | 8 | **Testing & Commissioning (8)** | 119d | 2026-08-26 | 2027-02-08 |  | 0d |  |  | 899.2h | 200,320 |
| 117 | 8.1 | **Grid Testing & Synchronization (8.1)** | 26d | 2026-08-26 | 2026-09-30 |  | 0d |  |  | 224h | 47,120 |
| 118 | 8.1.1 | Perform relay protection testing (8.1.1) | 128h | 2026-08-26 | 2026-09-16 | 78, 87 | 0d |  | Testing and Commissioning department | 128h | 37,120 |
| 119 | 8.1.2 | Conduct load flow analysis (8.1.2) | 80h | 2026-09-17 | 2026-09-30 | 118 | 0d |  | Testing and Commissioning department; Electrical Engineering Unit [20%] | 96h | 10,000 |
| 120 | 8.2 | **Performance Testing (8.2)** | 33d | 2026-10-01 | 2026-11-16 |  | 0d |  |  | 248h | 27,200 |
| 121 | 8.2.1 | Conduct performance ratio tests (8.2.1) | 1mo | 2026-10-20 | 2026-11-16 | 125 | 0d |  | Testing and Commissioning department | 160h | 10,000 |
| 122 | 8.2.2 | Check thermal imaging of panels (8.2.2) | 8h | 2026-10-01 | 2026-10-01 | 119 | 0d |  | Testing and Commissioning department | 8h | 1,000 |
| 123 | 8.2.3 | Measure short-circuit current (8.2.3) | 80h | 2026-10-02 | 2026-10-15 | 122 | 0d |  | Testing and Commissioning department | 80h | 16,200 |
| 124 | 8.3 | **Grid & Final Approvals (8.3)** | 82d | 2026-10-16 | 2027-02-08 |  | 0d |  |  | 427.2h | 126,000 |
| 125 | 8.3.1 | Perform initial grid injection test (8.3.1) | 16h | 2026-10-16 | 2026-10-19 | 123 | 0d |  | Testing and Commissioning department; Electrical Engineering Unit [20%] | 11.2h | 6,000 |
| 126 | 8.3.2 | Finalize acceptance testing (8.3.2) | 1mo | 2026-11-17 | 2026-12-14 | 117, 120, 125 | 0d |  | Testing and Commissioning department | 160h | 80,000 |
| 127 | 8.3.3 | Obtain regulatory approval (8.3.3) | 1mo | 2026-12-15 | 2027-01-11 | 126 | 0d |  | Legal & Permitting Team; Electrical Installation Unit [20%] | 80h | 20,000 |
| 128 | 8.3.4 | Submit commissioning reports (8.3.4) | 1mo | 2027-01-12 | 2027-02-08 | 127 | 0d |  | Electrical Engineering Unit [20%]; Automation and SCADA Engineering Unit [50%]; Energy Engeneering Team [50%]; Power System Engineering Unit [50%] | 176h | 20,000 |
